# План -график разработки ЕСБД ГПО ВТС_2

Schedule from MS Project, 2015-10-08 to 2015-11-05.
Hewlett-Packard Company

## Calendars

- Стандартный: Mon-Fri 09:00-13:00, 14:00-18:00; Sat-Sun off.

## Resources

| Resource |
| --- |
| Казакевич А |
| Аббатов Руслан |
| Айтюрин Арман |
| Жумашев Ерлан |
| жумашев ерлан |
| ГКБ |
| Есмухамедов Нургали |
| Толеген Жансерик |
| Нурманов Есет |
| есмухамедов нургали |
| нурманов есет |

## Schedule

| ID | WBS | Task | Duration | Start | Finish | Predecessors | Total slack | Free slack | Constraint |
| --- | --- | --- | --- | --- | --- | --- | --- | --- | --- |
| 4 | 1 | Определение классов, полей классов, отношений между классами, эскизы интерфейсов ввода данных | 7d | 2015-10-08 | 2015-10-16 |  | 1d | 0d | start no earlier than 2015-10-08 |
| 5 | 2 | Определение необходимых веб-сервисов, параметров веб -сервисов, форматов данных | 7d | 2015-10-13 | 2015-10-21 |  | 6d | 0d | finish no earlier than 2015-10-21 |
| 6 | 3 | Передача страховым компаниям параметров веб-сервисов и форматов данных для интеграции АИС страховых компании с ЕСБД | 5d | 2015-10-22 | 2015-10-28 | 5 | 6d |  | start no earlier than 2015-10-19 |
| 7 | 4 | Разработка справочников | 5d | 2015-10-15 | 2015-10-21 |  | 11d |  | finish no earlier than 2015-10-21 |
| 8 | 5 | Разработка функции Регистрации страхового полиса | 8d? | 2015-10-12 | 2015-10-21 |  | 1d | 0d | start no earlier than 2015-10-12 |
| 9 | 6 | Тестирование и доработка интерфейсов Регистрации страхового полиса с представителями ГКБ и страховых компании | 10d | 2015-10-22 | 2015-11-04 | 8 | 1d |  |  |
| 10 | 7 | Разработка веб-сервиса регистрации страхового полиса и получения уникального номера | 5d? | 2015-10-19 | 2015-10-23 | 4 | 1d | 0d | start no earlier than 2015-10-19 |
| 11 | 8 | Тестирование и доработка веб-сервисов с представителями ГКБ и страховых компаний | 8d | 2015-10-26 | 2015-11-04 | 10 | 1d |  |  |
| 12 | 9 | Разработка функции регистрации страхового случая | 5d | 2015-10-26 | 2015-10-30 |  | 0d |  | start no earlier than 2015-10-26 |
| 13 | 10 | Разработка веб-сервиса регистрации страхового случая | 4d | 2015-11-02 | 2015-11-05 | 12 | 0d |  |  |
| 14 | 11 | **Установка кластера серверов для функционирования в режиме 24 х 7** | 12d | 2015-10-19 | 2015-11-03 |  | 2d |  |  |
| 15 | 11.1 | Определение параметров кластера серверов | 3d | 2015-10-19 | 2015-10-21 |  | 2d | 0d | finish no earlier than 2015-10-21 |
| 16 | 11.2 | Подготовка серверов | 2d | 2015-10-22 | 2015-10-23 | 15 | 2d | 0d |  |
| 17 | 11.3 | Установка кластера серверов, установка ПО IBM FileNet | 5d | 2015-10-26 | 2015-10-30 | 16 | 2d | 0d |  |
| 18 | 11.4 | Установка системы на рабочий сервер | 2d | 2015-11-02 | 2015-11-03 | 17 | 2d |  |  |
